Schedule from MS Project, 2020-11-04 to 2021-01-13, costs in €, A marks actual dates.

## Calendars

- Estándar: Mon-Fri 09:00-13:00, 15:00-19:00; Sat-Sun off.

## Resources

| Resource | Rate |
| --- | --- |
| Programador | 13 |
| Artista | 11 |
| Guionista 1 | 13 |
| Técnico de sonido | 12 |
| Gestora | 15 |
| Guionista 2 | 13 |

## Schedule

| ID | WBS | Task | Type | Duration | Start | Finish | Predecessors | Complete | Remaining | Total slack | Free slack | Constraint | Resources | Work | Actual work | Cost | Actual cost |
| --- | --- | --- | --- | --- | --- | --- | --- | --- | --- | --- | --- | --- | --- | --- | --- | --- | --- |
| 1 | 1 | Identificación de requisitos |  | 7d | 2020-11-04 A | 2020-11-12 A |  | 100% |  |  |  |  | Gestora [50%] | 28h | 28h | 420 | 420 |
| 2 | 2 | **WP4 Arte** |  | 40d | 2020-11-13 A | 2021-01-07 | 1 | 48% | 21d | 4d |  |  |  | 240h | 114h | 2,640 | 1,254 |
| 3 | 2.1 | Diseño de interfaz |  | 7d | 2020-11-13 A | 2020-11-23 A | 1 | 100% |  |  |  |  | Artista [75%] | 42h | 42h | 462 | 462 |
| 4 | 2.2 | Entrega del diseño de interfaz | milestone | 0d | 2020-11-23 | 2020-11-23 | 3 |  |  | 1.75d | 0d |  |  |  |  |  |  |
| 5 | 2.3 | Búsqueda/creación de fondos |  | 12d | 2020-11-24 A | 2020-12-09 A | 4 | 100% |  |  |  | finish no earlier than 2020-12-09 | Artista [75%] | 72h | 72h | 792 | 792 |
| 6 | 2.4 | Concept y arte final de los personajes |  | 21d | 2020-12-10 | 2021-01-07 | 5 |  |  | 2d | 0d |  | Artista [75%] | 126h |  | 1,386 |  |
| 7 | 2.5 | Entrega de personajes y fondos | milestone | 0d | 2021-01-07 | 2021-01-07 | 6 |  |  | 2d | 1d |  |  |  |  |  |  |
| 8 | 3 | **WP1 Programación** |  | 43d | 2020-11-13 A | 2021-01-13 | 1 | 78% | 9.62d | 1d |  |  |  | 155.6h | 119.8h | 2,007.2 | 1,549.6 |
| 9 | 3.1 | Programar sistema de diálogos |  | 23d | 2020-11-13 A | 2020-12-15 A | 1 | 100% |  |  |  | finish no earlier than 2020-12-15 | Programador [50%] | 92h | 92h | 1,196 | 1,196 |
| 10 | 3.2 | Comienzo fase testeo de los diálogos | milestone | 0d | 2020-12-15 | 2020-12-15 | 9 |  |  | 18d | 0d |  |  |  |  |  |  |
| 11 | 3.3 | Programar sistema de guardado de partidas |  | 5d | 2020-12-16 A | 2020-12-22 A | 9 | 100% |  |  |  |  | Programador [50%] | 20h | 20h | 260 | 260 |
| 12 | 3.4 | Programar conexión con base de datos en red |  | 5d | 2020-12-23 | 2020-12-29 | 11 |  |  | 11d |  |  | Programador [50%] | 20h |  | 260 |  |
| 13 | 3.5 | Introducción de elementos de sonido y arte en el juego |  | 2d | 2021-01-11 | 2021-01-12 | 24, 7 |  |  | 1d | 0d | finish no earlier than 2021-01-11 | Programador [50%] | 8h |  | 104 |  |
| 14 | 3.6 | Juego finalizado | milestone | 0d | 2021-01-13 | 2021-01-13 | 13 |  |  | 1d |  | start no earlier than 2021-01-13 |  |  |  |  |  |
| 15 | 3.7 | Testeo diálogos |  | 3d | 2020-12-16 A | 2020-12-18 | 10 | 50% | 1.5d | 18d |  | start no earlier than 2020-12-16 | Técnico de sonido [65%] | 15.6h | 7.8h | 187.2 | 93.6 |
| 16 | 4 | **WP2 Guión** |  | 33d | 2020-11-13 A | 2020-12-29 | 1 | 65% | 11.5d | 8d |  |  |  | 264h | 172h | 3,432 | 2,236 |
| 17 | 4.1 | Tratamiento de guion |  | 5d | 2020-11-13 A | 2020-11-19 A | 1 | 100% |  |  |  |  | Guionista 1 [50%]; Guionista 2 [50%] | 40h | 40h | 520 | 520 |
| 18 | 4.2 | Escribir guion |  | 22d | 2020-11-20 A | 2020-12-21 | 17 | 75% | 5.5d | 8d | 0d |  | Guionista 1 [50%]; Guionista 2 [50%] | 176h | 132h | 2,288 | 1,716 |
| 19 | 4.3 | Entrega del guión | milestone | 0d | 2020-12-21 | 2020-12-21 | 18 |  |  | 4d | 0d |  |  |  |  |  |  |
| 20 | 4.4 | Traducir guion |  | 6d | 2020-12-22 | 2020-12-29 | 19 |  |  | 8d | 0d |  | Guionista 1 [50%]; Guionista 2 [50%] | 48h |  | 624 |  |
| 21 | 5 | Integrar guion del juego |  | 3d | 2020-12-30 | 2021-01-01 | 9, 20 |  |  | 8d |  |  | Guionista 1 [50%]; Programador [50%]; Guionista 2 [50%] | 36h |  | 468 |  |
| 22 | 6 | **WP3 Sonido** |  | 36d | 2020-11-20 A | 2021-01-08 | 17 | 50% | 18d | 1d |  |  |  | 166.4h | 83.2h | 1,996.8 | 998.4 |
| 23 | 6.1 | Efectos de sonido y banda sonora |  | 32d | 2020-11-20 A | 2021-01-08 | 17 | 50% | 16d | 1d | 0d | finish no earlier than 2021-01-08 | Técnico de sonido [65%] | 166.4h | 83.2h | 1,996.8 | 998.4 |
| 24 | 6.2 | Entrega del sonido | milestone | 0d | 2021-01-08 | 2021-01-08 | 23 |  |  | 1d | 0d |  |  |  |  |  |  |
| 25 | 7 | Memoria del proyecto |  | 44d | 2020-11-13 A | 2021-01-13 | 1 | 50% | 22d | 0d |  | finish no earlier than 2021-01-13 | Gestora [50%] | 176h | 88h | 2,640 | 1,320 |
